# Gant - Proyecto

Schedule from MS Project, 2025-08-11 to 2025-10-26.

## Calendars

- Estándar: Mon-Fri 09:00-13:00, 15:00-19:00; Sat-Sun off.
- 7 dias: Mon-Sun 08:00-17:00.

## Schedule

| ID | WBS | Task | Type | Duration | Start | Finish | Predecessors | Total slack | Free slack | Constraint | Calendar |
| --- | --- | --- | --- | --- | --- | --- | --- | --- | --- | --- | --- |
| 1 | 1 | **Proyecto Final** |  | 86d | 2025-08-11 | 2025-10-26 |  | 0d |  |  | 7 dias |
| 2 | 1.1 | Inicio de cursada | milestone | 0d | 2025-08-11 | 2025-08-11 |  | 0d |  | start no earlier than 2025-08-11 | 7 dias |
| 3 | 1.2 | Selección de proyecto, estudio de viabilidad y definición del alcance |  | 4d | 2025-08-11 | 2025-08-14 | 2 | 0d |  |  | 7 dias |
| 4 | 1.3 | Selección y compra de materiales |  | 14d | 2025-08-14 | 2025-08-27 | 3 | 0d |  |  | 7 dias |
| 5 | 1.4 | Entrega de Propuesta Inicial | milestone | 0d | 2025-08-25 | 2025-08-25 | 2FS+16d | 70d |  |  | 7 dias |
| 6 | 1.5 | Armado y puesta en funcionamiento de Dron |  | 28d | 2025-08-14 | 2025-09-08 | 4FS-14d | 4d | 0d |  | 7 dias |
| 7 | 1.6 | Desarrollo de pilotaje autonomo GPS |  | 14d | 2025-09-08 | 2025-09-20 | 6 | 4d |  |  | 7 dias |
| 8 | 1.7 | Armado y programacion de sistema de deteccion IR |  | 21d | 2025-08-18 | 2025-09-05 | 4FS-10d | 0d |  |  | 7 dias |
| 9 | 1.8 | Armado y programacion de sistema de camara RGB |  | 21d | 2025-08-18 | 2025-09-05 | 4FS-10d | 0d |  |  | 7 dias |
| 10 | 1.9 | Programacion de sistema de comunicación IR+RGB+Base |  | 14d | 2025-09-05 | 2025-09-18 | 8, 9 | 0d |  |  | 7 dias |
| 11 | 1.10 | Integracion de IR + RGB |  | 7d | 2025-09-18 | 2025-09-24 | 10 | 0d |  |  | 7 dias |
| 12 | 1.11 | Integracion de Dron y Sistema de Detección |  | 14d | 2025-09-24 | 2025-10-06 | 11, 7 | 0d |  |  | 7 dias |
| 13 | 1.12 | Armado y programacion de compartimento portaobjetos |  | 7d | 2025-09-05 | 2025-09-12 | 8 | 28d |  |  | 7 dias |
| 14 | 1.13 | Integracion de Dron y Portaobjetos |  | 7d | 2025-10-07 | 2025-10-13 | 12, 13 | 0d |  |  | 7 dias |
| 15 | 1.14 | Etapa de pruebas |  | 15d | 2025-10-13 | 2025-10-26 | 14 | 0d |  |  | 7 dias |
| 16 | 1.15 | Entrega final | milestone | 0d | 2025-10-26 | 2025-10-26 | 15 | 0d |  |  | 7 dias |
